# TenQTDA_TenSanPham_Plan

Schedule from MS Project, 2020-12-04 to 2020-12-31, A marks actual dates.

## Calendars

- Standard: Mon-Fri 08:00-12:00, 13:00-17:00; Sat-Sun off.

## Resources

| Resource |
| --- |
| DucKT |
| HieuPT |
| CuongPH |
| HieuHD |
| TrinhDM |
| HieuND |
| ThanhTM |
| QuyetPQ |
| QuyetPH |
| CuongPH QuyetPQ ThanhTM |
| CuongPH ThanhTM QuyetPQ |
| CuongPH ThanhTM |
| HungLT2 |
| NganDT |
| XuyenCT |
| HienNT |
| FCS |
| FIA |
| TrAPTH |
| NgocTA2 |
| QuangDD2 |
| HienTTT2 |
| FHR |
| ANHPD |
| LinhNH |

## Schedule

| ID | WBS | Task | Duration | Start | Finish | Predecessors | Complete | Remaining | Total slack | Free slack | Constraint | Resources | Work | Actual work |
| --- | --- | --- | --- | --- | --- | --- | --- | --- | --- | --- | --- | --- | --- | --- |
| 1 | 1 | **EzTVDT** | 19.75d | 2020-12-04 A | 2020-12-31 |  | 43% | 11.33d | 0d |  |  |  | 244h | 104h |
| 2 | 1.1 | **TIẾP NHẬN YÊU CẦU - GAP** | 2.25d | 2020-12-04 A | 2020-12-08 A |  | 100% |  |  |  |  |  | 16h | 16h |
| 3 | 1.1.1 | Phân tích GAP | 0.5d | 2020-12-04 A | 2020-12-04 A |  | 100% |  |  |  | start no earlier than 2020-12-04 | TrinhDM | 4h | 4h |
| 4 | 1.1.2 | **PHÂN TÍCH THIẾT KẾ** | 1.75d | 2020-12-04 A | 2020-12-08 A |  | 100% |  |  |  |  |  | 12h | 12h |
| 5 | 1.1.2.1 | Kiến trúc tổng thể | 0.5d | 2020-12-04 A | 2020-12-04 A | 3 | 100% |  |  |  | start no earlier than 2020-06-01 | TrinhDM | 4h | 4h |
| 6 | 1.1.2.2 | Thiết kế database | 1d | 2020-12-07 A | 2020-12-08 A | 5 | 100% |  |  |  |  | TrinhDM | 8h | 8h |
| 7 | 1.2 | **LẬP TRÌNH - UNITEST** | 8.75d | 2020-12-08 A | 2020-12-18 |  | 61% | 3.4d | 8.75d |  |  |  | 144h | 88h |
| 8 | 1.2.1 | **Coding project** | 8.75d | 2020-12-08 A | 2020-12-18 |  | 61% | 3.4d | 8.75d |  |  |  | 144h | 88h |
| 9 | 1.2.1.1 | Vẽ giao diện Form kế hoạch đầu tư chi tiết | 1d | 2020-12-08 A | 2020-12-09 A | 6 | 100% |  |  |  | start no earlier than 2020-12-03 | LinhNH | 8h | 8h |
| 10 | 1.2.1.2 | Viết SP load lên danh sách kế hoạch đầu tư | 1d | 2020-12-09 A | 2020-12-10 A | 9 | 100% |  |  |  |  | LinhNH | 8h | 8h |
| 11 | 1.2.1.3 | Viết SP cập nhật bản kế hoạch đầu tư chi tiết | 1d | 2020-12-10 A | 2020-12-11 A | 10 | 100% |  |  |  |  | LinhNH | 8h | 8h |
| 12 | 1.2.1.4 | Code API get list kế hoạch đầu tư | 1.5d | 2020-12-08 A | 2020-12-09 A | 6 | 100% |  |  |  | start no earlier than 2020-06-02 | TrinhDM | 12h | 12h |
| 13 | 1.2.1.5 | Code API cập nhật kế hoạch đầu tư chi tiết | 1.5d | 2020-12-09 A | 2020-12-11 A | 12 | 100% |  |  |  |  | TrinhDM | 12h | 12h |
| 14 | 1.2.1.6 | Code action get danh sách kế hoạch đầu tư | 1.5d | 2020-12-11 A | 2020-12-14 A | 11 | 100% |  |  |  |  | LinhNH | 12h | 12h |
| 15 | 1.2.1.7 | Code action cập nhật kế hoạch đầu tư chi tiết | 1.5d | 2020-12-14 A | 2020-12-16 A | 14 | 100% |  |  |  |  | LinhNH | 12h | 12h |
| 16 | 1.2.1.8 | Review Code | 2d | 2020-12-16 A | 2020-12-18 A | 15 | 100% |  |  |  |  | TrinhDM | 16h | 16h |
| 17 | 1.2.1.9 | **EzTVDT** | 7d | 2020-12-10 | 2020-12-18 |  |  |  | 8.75d |  |  |  | 56h |  |
| 18 | 1.2.1.9.1 | Giao diện form kế họah đầu tư | 2d | 2020-12-10 | 2020-12-11 |  |  |  | 7.35d | 0d | start no earlier than 2020-12-10 | DucKT | 16h |  |
| 19 | 1.2.1.9.2 | Viết SP load danh sách | 2d | 2020-12-14 | 2020-12-15 | 18 |  |  | 7.35d | 0d |  | DucKT | 16h |  |
| 20 | 1.2.1.9.3 | Code form | 2d | 2020-12-16 | 2020-12-17 | 19 |  |  | 7.35d | 0d |  | DucKT | 16h |  |
| 21 | 1.2.1.9.4 | Unitest | 1d | 2020-12-18 | 2020-12-18 | 20 |  |  | 7.35d |  |  | DucKT | 8h |  |
| 22 | 1.3 | **TEST TÍCH HỢP (Tổng hợp theo plan System Test)** | 3d | 2020-12-18 | 2020-12-23 |  |  |  | 0d |  |  |  | 24h |  |
| 23 | 1.3.1 | SystemTest | 3d | 2020-12-18 | 2020-12-23 | 16 |  |  | 0d |  | start no earlier than 2020-09-16 | XuyenCT | 24h |  |
| 24 | 1.4 | **ReviewDB** | 1d | 2020-12-23 | 2020-12-24 |  |  |  | 5.5d |  |  |  | 8h |  |
| 25 | 1.4.1 | Review DB | 1d | 2020-12-23 | 2020-12-24 | 23 |  |  | 5.1d |  | start no earlier than 2020-09-14 | HienTTT2 | 8h |  |

| ID | WBS | Task | Duration | Start | Finish | Predecessors | Total slack | Constraint | Resources | Work |
| --- | --- | --- | --- | --- | --- | --- | --- | --- | --- | --- |
| 26 | 1.5 | **UAT Test** | 5d | 2020-12-23 | 2020-12-30 | 23 | 0d |  |  | 40h |
| 27 | 1.5.1 | UAT Test | 5d | 2020-12-23 | 2020-12-30 | 23 | 0d |  | ANHPD | 40h |
| 28 | 1.6 | **Kế hoạch Update bản thật** | 1.5d | 2020-12-30 | 2020-12-31 | 27 | 0d |  |  | 12h |
| 29 | 1.6.1 | **EzTVDT** | 1.5d | 2020-12-30 | 2020-12-31 | 27 | 0d |  |  | 12h |
| 30 | 1.6.1.1 | Plan | 0.5d | 2020-12-30 | 2020-12-30 | 27 | 0d | start no earlier than 2020-09-16 | TrinhDM | 4h |
| 31 | 1.6.1.2 | Review plan | 0.5d | 2020-12-30 | 2020-12-31 | 30 | 0d | start no earlier than 2020-09-16 | CuongPH | 4h |
| 32 | 1.6.1.3 | Check list, kịch bản | 0.4d | 2020-12-31 | 2020-12-31 | 31 | 0d | start no earlier than 2020-09-16 | LinhNH | 3.2h |
| 33 | 1.6.1.4 | báo lại user | 0.1d | 2020-12-31 | 2020-12-31 | 32 | 0d |  | LinhNH | 0.8h |
